# Pfizer Continuum Project Plan

Schedule from MS Project, 2012-12-03 to 2014-01-07, A marks actual dates.

## Calendars

- Standard: Mon-Fri 08:00-12:00, 13:00-17:00; Sat-Sun off.

## Resources

| Resource |
| --- |
| Bala |
| Smita |
| Nelli |
| Paula |
| Hugh |
| Steve Matyas |
| Todd |
| Steve L |
| Sohal |
| Harsha |
| Naveen |
| BDA Team |
| Systems Team |
| QA3 |
| QA4 |
| QA5 |
| Vrushali |
| Max |
| VCDE |
| Anu |
| rushali |
| CTEP |
| caXchange |
| C3PR |
| caAERS |
| PSC |
| LV |
| BDA |
| "C3PR |
| Documentation |
| caGrid |
| QA |
| BAM |
| Edmond |
| NCI |
| SAIC-F |
| Web Team |
| Bill Dyer |
| CCTS Team |
| John S |
| Patrick |
| Architects |
| Christo |
| John |
| Rhett |
| Nellie |
| Steve |
| Kalpesh |
| David L |
| Stevel L |
| Kumar C |
| Gia |
| Wendy |
| Raj |
| Steve M |
| Lauren |
| Systems |
| CTRO |
| Hannes |
| SMEs |
| Gisele |
| Joe |
| CTRP Dev team |
| CBIIT |
| All |
| Analysts |
| TBD |
| Charles |
| ESST |
| Developers |
| Lisa |
| Christophe |
| Krishna |
| QA1 |
| QA2 |
| David |
| Security |
| Arch |
| Tech Leads |
| Paula B |
| Kalpana |
| KK |
| Abe |
| Kim |
| Vijay |
| CAT |
| George |
| Larry |
| Michael O |
| Resource 1 |
| Resource 2 |
| Resource3 |
| Resource 4 |
| Resource 5 |
| Gisele S |
| Dianne R |
| HR |
| NA |
| SL |
| ScenPro |
| 5AM |
| TP |
| EM |
| KE |
| JM |
| DL |
| Paul |
| Michael |
| Eilis |
| Team |
| Dev team |
| Ram P |
| NIH 508 team |
| Bryan |
| Bill D |
| Marina |
| Ye |
| Rashmi |
| Ann Wiley |
| Winston |
| QA* |
| Systems* |
| Sree |

## Schedule

| ID | WBS | Task | Type | Duration | Start | Finish | Predecessors | Complete | Remaining | Total slack | Free slack | Constraint | Resources | Work | Actual work |
| --- | --- | --- | --- | --- | --- | --- | --- | --- | --- | --- | --- | --- | --- | --- | --- |
| 1 | 1 | **caArray** |  | 287d | 2012-12-03 A | 2014-01-07 |  | 15% | 243.46d | 0d |  | start no earlier than 2012-12-03 |  | 7912h | 1312h |
| 2 | 1.1 | **caArray 2.5.1** |  | 151d | 2012-12-03 A | 2013-07-01 |  | 47% | 80.53d | 136d |  |  |  | 2152h | 1312h |
| 3 | 1.1.1 | MILESTONE: PROJECT KICKOFF |  | 1d | 2012-12-06 A | 2012-12-06 A |  | 100% |  |  |  | start no earlier than 2012-12-06 |  |  |  |
| 4 | 1.1.2 | User Support - Rembrandt, etc. |  | 3d | 2012-12-03 A | 2012-12-05 A |  | 100% |  |  |  |  | Winston; Rashmi | 48h | 48h |
| 5 | 1.1.3 | Support Apache upgrade of all tiers |  | 5d | 2012-12-06 A | 2012-12-12 A | 4 | 100% |  |  |  |  | Rashmi | 40h | 40h |
| 6 | 1.1.4 | Review TRANSCEND UAT plan |  | 1d | 2012-12-13 A | 2012-12-13 A | 5 | 100% |  |  |  |  | Rashmi | 8h | 8h |
| 7 | 1.1.5 | Vacation and Team Member Unavailability |  | 10d | 2012-12-14 A | 2012-12-27 A | 6 | 100% |  |  |  |  | Winston; Rashmi | 160h | 160h |
| 8 | 1.1.6 | OSDI: Obtain GitHub accounts for all team members |  | 1d | 2012-12-28 A | 2012-12-28 A | 7 | 100% |  |  |  |  | Winston; Rashmi | 16h | 16h |
| 9 | 1.1.7 | OSDI: Do initial analysis, generate author list, fill out checklist |  | 3d | 2012-12-31 A | 2013-01-02 A | 8 | 100% |  |  |  |  | Winston; Rashmi | 48h | 48h |
| 10 | 1.1.8 | Rewrite PMP in EPLC format and update Project Plan |  | 2d | 2013-01-03 A | 2013-01-04 A | 9 | 100% |  |  |  |  | Rashmi | 16h | 16h |
| 11 | 1.1.9 | OSDI: Obtain access to NCIP channel in GitHub (Dependency) |  | 7d | 2012-12-31 A | 2013-01-08 A | 8 | 100% |  |  |  |  | Sree; Larry | 112h | 112h |
| 12 | 1.1.10 | OSDI: Generate a local git copy |  | 2d | 2013-01-03 A | 2013-01-04 A | 9 | 100% |  |  |  |  | Winston | 16h | 16h |
| 13 | 1.1.11 | OSDI: Split software and tools from docs and test data. |  | 3d | 2013-01-07 A | 2013-01-09 A | 12 | 100% |  |  |  |  | Winston | 24h | 24h |
| 14 | 1.1.12 | OSDI: Migrate local git copy to GitHub under NCIP |  | 4d | 2013-01-10 A | 2013-01-15 A | 11, 13 | 100% |  |  |  |  | Winston | 32h | 32h |
| 15 | 1.1.13 | OSDI: Change license/copyright text and merge into GitHub repo. |  | 2d | 2013-01-16 A | 2013-01-17 A | 14 | 100% |  |  |  |  | Winston | 16h | 16h |
| 16 | 1.1.14 | OSDI: Make build changes. (Remove svn dependencies, pull jboss from the tools directory, etc.) |  | 6d | 2013-01-18 A | 2013-01-25 A | 15 | 100% |  |  |  |  | Winston | 48h | 48h |
| 17 | 1.1.15 | OSDI: Update README and other documentation |  | 1d | 2013-02-04 A | 2013-02-04 A | 16 | 100% |  |  |  |  | Winston; Rashmi | 16h | 16h |
| 18 | 1.1.16 | Section 508 Compliance Improvements |  | 21d | 2013-02-05 A | 2013-03-05 A | 17 | 100% |  |  |  |  | Winston; Rashmi | 336h | 336h |
| 19 | 1.1.17 | OSDI: Work with the Systems team to update and test the Dev AHP build. |  | 4d | 2013-02-27 A | 2013-03-04 A | 16 | 100% |  |  |  |  | Winston; Systems | 64h | 64h |
| 20 | 1.1.18 | OSDI: Final test of AHP build on Dev tier |  | 1d | 2013-03-05 A | 2013-03-05 A | 19 | 100% |  |  |  |  | Winston; Systems; Rashmi | 24h | 24h |
| 21 | 1.1.19 | OSDI: Work with the Systems team to update/test AHP on QA/STAGE |  | 15d | 2013-03-06 A | 2013-03-26 A | 20 | 100% |  |  |  |  | Winston; Rashmi | 240h | 240h |
| 22 | 1.1.20 | Performance and other Bug Fixes |  | 20d | 2013-03-12 A | 2013-04-08 | 20 | 30% | 14d | 0d |  | start no earlier than 2013-03-12 | Winston | 160h | 48h |
| 23 | 1.1.21 | OSDI: Work with the Systems team to update/test AHP on PROD,Curation,Training |  | 15d | 2013-03-27 | 2013-04-16 | 21 |  |  | 190d |  |  | Winston | 120h |  |
| 24 | 1.1.22 | Automated Regression Testing on QA tier |  | 5d | 2013-04-09 | 2013-04-15 | 22 |  |  | 5d | 0d |  | QA* | 40h |  |
| 25 | 1.1.23 | Manual Regression Testing on QA tier |  | 4d | 2013-04-16 | 2013-04-19 | 24 |  |  | 5d | 0d |  | QA* | 32h |  |
| 26 | 1.1.24 | Installer Testing |  | 4d | 2013-04-22 | 2013-04-25 | 25 |  |  | 5d | 0d |  | QA* | 32h |  |
| 27 | 1.1.25 | QA reviews Section 508 compliance report |  | 2d | 2013-04-26 | 2013-04-29 | 26 |  |  | 5d |  |  | QA* | 16h |  |
| 28 | 1.1.26 | Appscan on QA tier |  | 20d | 2013-04-09 | 2013-05-06 | 22 |  |  | 0d |  |  | Systems* | 160h |  |
| 29 | 1.1.27 | Test Results Review and Reporting |  | 3d | 2013-05-07 | 2013-05-09 | 28, 24, 25, 26, 27 |  |  | 0d |  |  | QA* | 24h |  |
| 30 | 1.1.28 | Bug Fixes - Critical |  | 10d | 2013-05-10 | 2013-05-23 | 29 |  |  | 0d |  |  |  |  |  |
| 31 | 1.1.29 | Deploy to STAGE |  | 1d | 2013-05-24 | 2013-05-24 | 30 |  |  | 0d |  |  | Systems* | 8h |  |
| 32 | 1.1.30 | Appscan on STAGE tier |  | 20d | 2013-05-27 | 2013-06-21 | 31 |  |  | 136d | 0d |  | Systems* | 160h |  |
| 33 | 1.1.31 | Automated Regression Testing on STAGE |  | 4d | 2013-05-27 | 2013-05-30 | 31 |  |  | 150d | 0d |  | QA* | 32h |  |
| 34 | 1.1.32 | API Testing on STAGE |  | 2d | 2013-05-31 | 2013-06-03 | 33 |  |  | 150d | 14d |  | QA* | 16h |  |
| 35 | 1.1.33 | Test Results Review and Reporting |  | 3d | 2013-06-24 | 2013-06-26 | 33, 34, 32 |  |  | 136d | 0d |  | QA* | 24h |  |
| 36 | 1.1.34 | Create release artifacts |  | 1d | 2013-05-27 | 2013-05-27 | 31 |  |  | 161d |  |  | QA*; Winston; Rashmi | 24h |  |
| 37 | 1.1.35 | Deploy to PRODUCTION |  | 2d | 2013-06-27 | 2013-06-28 | 35 |  |  | 136d | 0d |  | Systems* | 16h |  |
| 38 | 1.1.36 | Update product landing page |  | 1d | 2013-07-01 | 2013-07-01 | 37 |  |  | 136d |  |  | Rashmi | 8h |  |
| 39 | 1.1.37 | QA smoke tests PRODUCTION |  | 1d | 2013-07-01 | 2013-07-01 | 37 |  |  | 136d | 0d |  | QA*; Rashmi | 16h |  |
| 40 | 1.1.38 | MILESTONE: RELEASE 2.5.1 | milestone | 0d | 2013-07-01 | 2013-07-01 | 39 |  |  | 136d |  | start no earlier than 2012-01-09 |  |  |  |

| ID | WBS | Task | Type | Duration | Start | Finish | Predecessors | Total slack | Free slack | Constraint | Resources | Work |
| --- | --- | --- | --- | --- | --- | --- | --- | --- | --- | --- | --- | --- |
| 41 | 1.2 | **caArray 2.5.2** |  | 162d | 2013-05-27 | 2014-01-07 |  | 0d |  |  |  | 1664h |
| 42 | 1.2.1 | CSM/UPT upgrade |  | 10d | 2013-05-27 | 2013-06-07 | 31 | 0d |  |  | Winston | 80h |
| 43 | 1.2.2 | FISMA POAM |  | 20d | 2013-06-10 | 2013-07-05 | 42 | 0d |  |  | Winston; Rashmi | 320h |
| 44 | 1.2.3 | Support Gforge Retirement |  | 5d | 2013-07-08 | 2013-07-12 | 43 | 0d |  |  | Winston; Rashmi | 80h |
| 45 | 1.2.4 | Bug Fixes |  | 20d | 2013-07-15 | 2013-08-09 | 44 | 0d |  |  | Winston | 160h |
| 46 | 1.2.5 | Data Migration to File System |  | 30d | 2013-08-12 | 2013-09-20 | 45 | 0d |  |  | Winston | 240h |
| 47 | 1.2.6 | Any Improvements Requested |  | 20d | 2013-09-23 | 2013-10-18 | 46 | 0d |  |  | Winston | 160h |
| 48 | 1.2.7 | MILESTONE: EPLC REVIEW (as needed) |  | 2d | 2013-10-21 | 2013-10-22 | 47 | 0d |  | start no earlier than 2012-01-09 | Winston; Rashmi | 32h |
| 49 | 1.2.8 | Automated Regression Testing on QA tier |  | 5d | 2013-10-23 | 2013-10-29 | 48 | 0d |  |  | QA* | 40h |
| 50 | 1.2.9 | Manual Regression Testing on QA tier |  | 4d | 2013-10-30 | 2013-11-04 | 49 | 10d | 0d |  | QA* | 32h |
| 51 | 1.2.10 | Installer Testing |  | 4d | 2013-11-05 | 2013-11-08 | 50 | 10d | 0d |  | QA* | 32h |
| 52 | 1.2.11 | Section 508 testing on QA tier |  | 2d | 2013-11-11 | 2013-11-12 | 51 | 10d |  |  | QA* | 16h |
| 53 | 1.2.12 | Appscan on QA tier |  | 20d | 2013-10-30 | 2013-11-26 | 49 | 0d |  |  | Systems* | 160h |
| 54 | 1.2.13 | Test Results Review and Reporting |  | 3d | 2013-11-27 | 2013-11-29 | 53, 49, 50, 51, 52 | 0d |  |  | QA* | 24h |
| 55 | 1.2.14 | Deploy to STAGE |  | 1d | 2013-12-02 | 2013-12-02 | 54 | 0d |  |  | Systems* | 8h |
| 56 | 1.2.15 | Appscan on STAGE tier |  | 20d | 2013-12-03 | 2013-12-30 | 55 | 0d |  |  | Systems* | 160h |
| 57 | 1.2.16 | Automated Regression Testing on STAGE |  | 4d | 2013-12-03 | 2013-12-06 | 55 | 14d | 0d |  | QA* | 32h |
| 58 | 1.2.17 | API Testing on STAGE |  | 2d | 2013-12-09 | 2013-12-10 | 57 | 14d |  |  | QA* | 16h |
| 59 | 1.2.18 | Test Results Review and Reporting |  | 3d | 2013-12-31 | 2014-01-02 | 56, 57, 58 | 0d |  |  | QA* | 24h |
| 60 | 1.2.19 | Create release artifacts |  | 1d | 2013-12-03 | 2013-12-03 | 55 | 25d |  |  | Rashmi | 8h |
| 61 | 1.2.20 | Deploy to PRODUCTION |  | 2d | 2014-01-03 | 2014-01-06 | 59 | 0d |  |  | Systems* | 16h |
| 62 | 1.2.21 | Update product landing page |  | 1d | 2014-01-07 | 2014-01-07 | 61 | 0d |  |  | Rashmi; Systems* | 16h |
| 63 | 1.2.22 | QA smoke tests PRODUCTION |  | 1d | 2014-01-07 | 2014-01-07 | 61 | 0d |  |  | QA* | 8h |
| 64 | 1.2.23 | MILESTONE: RELEASE 2.5.2 | milestone | 0d | 2014-01-07 | 2014-01-07 | 63 | 0d |  | start no earlier than 2012-01-09 |  |  |
| 65 | 1.3 | User Support |  | 256d | 2012-12-07 | 2013-11-29 | 3 | 23d |  |  | Winston; Rashmi | 4096h |
| 68 | 1.4 | *QA and Systems are EXTERNAL resources/dependencies | milestone | 0d | 2012-12-03 | 2012-12-03 |  | 283d |  |  |  |  |
